# Proyecto - Simulacion de choques

How a schedule from MS Project changed from version to version. A marks actual dates.

## Version 1 (saved 2012-05-19)

Note of the change: Agregado el gantt

| ID | WBS | Task | Duration | Start | Finish | Predecessors | Total float | Constraint |
| --- | --- | --- | --- | --- | --- | --- | --- | --- |
| 1 | 1 | **Simulacion de choques** | 229.38d | 2012-04-11 | 2012-10-31 |  | 0d |  |
| 2 | 1.1 | **Investigacion** | 30.62d | 2012-04-11 | 2012-05-08 |  | 20.5d |  |
| 3 |  | Investigacion de motores Graficos | 7d | 2012-04-11 | 2012-04-17 |  | 23.12d | start no earlier than 2012-04-11 |
| 4 |  | Investigacion de algoritmos de deformación | 7d | 2012-04-17 | 2012-04-23 | 3 | 23.12d |  |
| 5 |  | Investigación de modelos matemáticos de deformación | 7d | 2012-04-23 | 2012-04-29 | 4 | 23.12d |  |
| 6 |  | Investigación del Finite Element Method | 7d | 2012-05-02 | 2012-05-08 | 5 | 20.5d | start no earlier than 2012-05-02 |
| 7 | 1.2 | **Iteracion 0** | 22.38d | 2012-05-19 | 2012-06-07 |  | 0d |  |
| 8 |  | Eleccion de la plataforma / Lenguaje a utilizar / Framework para la interfaz grafica | 2d | 2012-05-19 | 2012-05-20 | 2 | 8.38d | start no earlier than 2012-05-19 |
| 9 |  | Investigacion de software de modelado | 1d | 2012-05-20 | 2012-05-21 | 8 | 8.38d | finish no earlier than 2012-05-20 |
| 10 |  | Investigación de implementaciones de FEM (motor de procesamiento) | 4d | 2012-05-21 | 2012-05-25 | 9 | 8.38d | finish no earlier than 2012-05-20 |
| 11 | 1.2.4 | **Pruebas de concepto** | 6d | 2012-06-01 | 2012-06-06 |  | 0.12d |  |
| 12 |  | Pruebas de interefaz gráfica con el lenguaje / framework elegido | 6d | 2012-06-01 | 2012-06-06 | 10 | 0.12d | finish no earlier than 2012-06-06 |
| 13 |  | Pruebas de alguna implementacion FEM encontrada | 6d | 2012-06-01 | 2012-06-06 | 10 | 0.12d | finish no earlier than 2012-06-06 |
| 14 |  | Testeo | 1d | 2012-06-07 | 2012-06-07 | 11 | 0d |  |
| 15 | 1.3 | **Iteración 1** | 35.88d | 2012-06-08 | 2012-07-09 | 7 | 0d |  |
| 16 |  | Diseño de la interfaz gráfica de usuario para el preprocesamiento | 2d | 2012-06-08 | 2012-06-09 |  | 0d |  |
| 17 |  | Definicion de la interfaz de datos entre el motor y el preprocesamiento | 2d | 2012-06-11 | 2012-06-12 | 16 | 0d |  |
| 18 | 1.3.3 | **Desarrollo** | 16d | 2012-06-13 | 2012-07-04 |  | 0d |  |
| 19 | 1.3.3.1 | **Desarrollo del motor de FEM (Parte 1)** | 5d | 2012-06-13 | 2012-06-19 |  | 14d |  |
| 20 |  | Adaptacion de la biblioteca FEM a utilizar | 5d | 2012-06-13 | 2012-06-19 | 17 | 14d |  |
| 21 | 1.3.3.2 | **Desarrollo de interfaz gráfica de preprocesameinto (Parte 1)** | 16d | 2012-06-13 | 2012-07-04 | 17 | 0d |  |
| 22 |  | Creación de escenario 3D para carga de modelos | 7d | 2012-06-13 | 2012-06-21 |  | 0d |  |
| 23 |  | Creación de botones y listas de parámetros configurables | 7d | 2012-06-22 | 2012-07-02 | 22 | 0d |  |
| 24 |  | Creación de modelos de ejemplo | 1d | 2012-07-03 | 2012-07-03 | 23 | 0d |  |
| 25 |  | Carga de modelos | 1d | 2012-07-04 | 2012-07-04 | 24 | 0d |  |
| 26 |  | Testeo | 3d | 2012-07-05 | 2012-07-09 | 21 | 0d |  |
| 27 | 1.4 | **Iteración 2** | 27.38d | 2012-07-09 | 2012-08-03 | 15 | 0d |  |
| 28 | 1.4.1 | **Desarrollo del motor de FEM (Parte 2)** | 15d | 2012-07-09 | 2012-07-23 | 15 | 9d |  |
| 29 |  | Lectura y procesamiento de los modelos preprocesados desde la interfaz previamente definida | 15d | 2012-07-09 | 2012-07-23 |  | 9d |  |
| 30 | 1.4.2 | **Desarrollo de interfaz gráfica de preprocesamineto (Parte 2)** | 24d | 2012-07-09 | 2012-07-31 | 15 | 0d |  |
| 31 |  | Mejorar la visualizacion 3D | 8d | 2012-07-09 | 2012-07-16 |  | 0d |  |
| 32 |  | Expansión de parámetros configurables | 8d | 2012-07-17 | 2012-07-24 | 31 | 0d |  |
| 33 |  | Almacenamiento de modelos preprocesados | 8d | 2012-07-24 | 2012-07-31 | 32 | 0d |  |
| 34 |  | Testeo | 3d | 2012-07-31 | 2012-08-03 | 28, 30 | 0d |  |
| 35 | 1.5 | **Iteración 3** | 51.75d | 2012-08-03 | 2012-09-18 | 27 | 0d |  |
| 36 |  | Definicion de la interfaz de datos entre el motor y el postprocesamiento | 2d | 2012-08-03 | 2012-08-07 |  | 29d |  |
| 37 |  | Diseño de la interfaz gráfica de usuario para el postprocesamiento | 1d | 2012-08-07 | 2012-08-08 | 36 | 29d |  |
| 38 | 1.5.3 | **Desarrollo del motor de FEM (Parte 3)** | 5d | 2012-08-03 | 2012-08-10 |  | 24d |  |
| 39 |  | Almacenamiento del resultado del procesamiento bajo la interfaz definida | 5d | 2012-08-03 | 2012-08-10 |  | 24d |  |
| 40 | 1.5.4 | **Desarrollo de interfaz grafica de postprocesamiento (Parte 1)** | 29d | 2012-08-03 | 2012-09-13 |  | 0d |  |
| 41 |  | Creación de escenario 3D para carga de los resultados | 6d | 2012-08-03 | 2012-08-13 |  | 0d |  |
| 42 |  | Creación de la lista de los frames a visualizar | 2d | 2012-08-13 | 2012-08-15 | 41 | 0d |  |
| 43 |  | Cargar resultados de procesamiento | 14d | 2012-08-15 | 2012-09-04 | 42 | 0d |  |
| 44 |  | Visualizar los resultados frame por frame. | 7d | 2012-09-04 | 2012-09-13 | 43 | 0d |  |
| 45 |  | Testeo | 3d | 2012-09-13 | 2012-09-18 | 38, 40 | 0d |  |
| 46 | 1.6 | **Iteración 4** | 25.88d | 2012-09-18 | 2012-10-11 | 35 | 0d |  |
| 47 | 1.6.1 | **Desarrollo de interfaz gráfica de preprocesamiento (Parte 3)** | 9d | 2012-09-18 | 2012-10-01 |  | 3.75d |  |
| 48 |  | Agregar parametros adicionales | 9d | 2012-09-18 | 2012-10-01 |  | 3.75d |  |
| 49 | 1.6.2 | **Desarrollo de interfaz grafica de postprocesamiento (Parte 2)** | 14d | 2012-09-18 | 2012-10-08 |  | 0d |  |
| 50 |  | Visualizacion de los resultados en base a diferentes criterios (Presion, tension y desplazamiento) | 7d | 2012-09-18 | 2012-09-27 |  | 0d |  |
| 51 |  | Opcion para ver los resultados de forma continua y fluida | 7d | 2012-09-27 | 2012-10-08 | 50 | 0d |  |
| 52 | 1.6.3 | **Desarrollo del motor FEM (Parte 4)** | 4.62d | 2012-10-01 | 2012-10-07 |  | 3.38d |  |
| 53 |  | Agregar los parametros adicionales al calculo del procesamiento | 7d | 2012-10-01 | 2012-10-07 | 48 | 4.25d |  |
| 54 |  | Testeo | 3d | 2012-10-08 | 2012-10-11 | 47, 49, 42 | 0d |  |
| 55 | 1.7 | **Iteracion 5** | 20.25d | 2012-10-11 | 2012-10-29 | 46 | 0d |  |
| 56 |  | Integracion | 5d | 2012-10-11 | 2012-10-18 |  | 0d |  |
| 57 |  | Creacion de modelos mas elaborados | 3d | 2012-10-11 | 2012-10-16 |  | 2d |  |
| 58 |  | Testeo final | 7d | 2012-10-18 | 2012-10-29 | 56, 57 | 0d |  |
| 59 |  | Cierre | 1d | 2012-10-29 | 2012-10-30 | 55 | 0d |  |
| 60 |  | Preparación de la presentación comercial | 2d | 2012-10-30 | 2012-10-31 | 59 | 0d |  |

## Version 2 (saved 2012-06-06)

Note of the change: Modificacion del project

Last finish stays 2012-10-31.

Added:

| ID | Task | Duration | Start | Finish | Predecessors | Constraint |
| --- | --- | --- | --- | --- | --- | --- |
| 2 | **Fase de inicio** | 55d | 2012-04-11 | 2012-05-29 |  |  |
| 10 | Análisis | 7d | 2012-05-09 | 2012-05-15 |  |  |
| 16 | **Fase de Ejecución** | 120d | 2012-05-29 | 2012-09-13 |  |  |
| 60 | Testing General y Final | 7d | 2012-09-03 | 2012-09-09 |  |  |
| 61 | **Iteración 6** | 4d | 2012-09-10 | 2012-09-13 | 57 |  |
| 62 | Manual de Usuario | 2d | 2012-09-10 | 2012-09-11 |  |  |
| 63 | Manual de Instalación y Configuración | 1d | 2012-09-11 | 2012-09-12 | 62 |  |
| 64 | Creación del instalador | 2d | 2012-09-11 | 2012-09-13 | 62 |  |
| 65 | **Fase de Cierre** | 4d | 2012-09-13 | 2012-09-17 | 16 |  |
| 66 | **Cierre del Proyecto** | 4d | 2012-09-13 | 2012-09-17 |  |  |
| 67 | Documentos de Lecciones Aprendidas | 1d | 2012-09-13 | 2012-09-14 |  |  |
| 68 | Documentos de Cierre | 2d | 2012-09-13 | 2012-09-15 |  |  |
| 70 | **Fase de Seguimiento, Control y Ajustes** | 229d | 2012-04-11 | 2012-10-31 |  |  |
| 71 | Reuniones y mails | 229d | 2012-04-11 | 2012-10-31 |  | start no earlier than 2012-04-11 |
| 72 | Informe de Avance (entregables) | 229d | 2012-04-11 | 2012-10-31 |  | start no earlier than 2012-04-11 |
| 73 | Ajustes de la planificación | 229d | 2012-04-11 | 2012-10-31 |  | start no earlier than 2012-04-11 |

Removed: 14 Testeo; 58 Testeo final; 59 Cierre

Changed:

| ID | Task | Start | Finish | Duration | Total float | Predecessors | Other |
| --- | --- | --- | --- | --- | --- | --- | --- |
| 1 | **Simulacion de choques** |  |  | 229.38d → 229d |  |  |  |
| 3 | **Investigacion** |  | 2012-05-08 → 2012-05-09 (+1d) | 30.62d → 32d | 20.5d → 50d |  |  |
| 4 | Investigacion de motores Graficos |  | 2012-04-17 → 2012-04-18 (+1d) | 7d → 8d | 23.12d → 50d |  |  |
| 5 | Investigacion de algoritmos de deformación | 2012-04-17 → 2012-04-18 (+1d) | 2012-04-23 → 2012-04-25 (+2d) | 7d → 8d | 23.12d → 50d |  |  |
| 6 | Investigación de modelos matemáticos de deformación | 2012-04-23 → 2012-04-25 (+2d) | 2012-04-29 → 2012-05-02 (+3d) | 7d → 8d | 23.12d → 50d |  |  |
| 7 | Investigación del Finite Element Method |  | 2012-05-08 → 2012-05-09 (+1d) | 7d → 8d | 20.5d → 50d |  | constraint start no earlier than 2012-05-02 → none |
| 8 | **Iteracion 0** | 2012-05-19 → 2012-05-09 (-10d) | 2012-06-07 → 2012-05-29 (-9d) | 22.38d → 23d | 0d → 50d |  |  |
| 9 | **Eleccion de la plataforma / Lenguaje a utilizar / Framework para la interfaz grafica** | 2012-05-19 → 2012-05-09 (-10d) | 2012-05-20 → 2012-05-15 (-5d) | 2d → 7d | 8.38d → 50d |  | constraint start no earlier than 2012-05-19 → none |
| 11 | Investigacion de software de modelado | 2012-05-20 → 2012-05-15 (-5d) | 2012-05-21 → 2012-05-18 (-3d) | 1d → 3d | 8.38d → 50d | 9 → 10 | constraint finish no earlier than 2012-05-20 → none |
| 12 | Investigación de implementaciones de FEM (motor de procesamiento) | 2012-05-21 → 2012-05-18 (-3d) | 2012-05-25 → 2012-05-23 (-2d) | 4d → 6d | 8.38d → 50d |  | constraint finish no earlier than 2012-05-20 → none |
| 13 | **Pruebas de concepto** | 2012-06-01 → 2012-05-23 (-9d) | 2012-06-06 → 2012-05-29 (-8d) | 6d → 7d | 0.12d → 50d |  |  |
| 14 | Pruebas de interefaz gráfica con el lenguaje / framework elegido | 2012-06-01 → 2012-05-23 (-9d) | 2012-06-06 → 2012-05-29 (-8d) | 6d → 7d | 0.12d → 50d |  | constraint finish no earlier than 2012-06-06 → none |
| 15 | Pruebas de alguna implementacion FEM encontrada | 2012-06-01 → 2012-05-23 (-9d) | 2012-06-06 → 2012-05-28 (-9d) |  | 0.12d → 51d |  | constraint finish no earlier than 2012-06-06 → none |
| 17 | **Iteración 1** | 2012-06-08 → 2012-05-29 (-10d) | 2012-07-09 → 2012-06-26 (-13d) | 35.88d → 31d | 0d → 50d |  |  |
| 18 | Diseño de la interfaz gráfica de usuario para el preprocesamiento | 2012-06-08 → 2012-05-29 (-10d) | 2012-06-09 → 2012-06-01 (-8d) | 2d → 3d | 0d → 50d |  |  |
| 19 | Definicion de la interfaz de datos entre el motor y el preprocesamiento | 2012-06-11 → 2012-06-01 (-10d) | 2012-06-12 → 2012-06-04 (-8d) | 2d → 3d | 0d → 50d |  |  |
| 20 | **Desarrollo** | 2012-06-13 → 2012-06-04 (-9d) | 2012-07-04 → 2012-06-23 (-11d) | 16d → 22d | 0d → 50d |  |  |
| 21 | **Desarrollo del motor de FEM (Parte 1)** | 2012-06-13 → 2012-06-04 (-9d) | 2012-06-19 → 2012-06-08 (-11d) |  | 14d → 72d |  |  |
| 22 | Adaptacion de la biblioteca FEM a utilizar | 2012-06-13 → 2012-06-04 (-9d) | 2012-06-19 → 2012-06-08 (-11d) |  | 14d → 72d |  |  |
| 23 | **Desarrollo de interfaz gráfica de preprocesameinto (Parte 1)** | 2012-06-13 → 2012-06-04 (-9d) | 2012-07-04 → 2012-06-23 (-11d) | 16d → 22d | 0d → 50d |  |  |
| 24 | Creación de escenario 3D para carga de modelos | 2012-06-13 → 2012-06-04 (-9d) | 2012-06-21 → 2012-06-14 (-7d) | 7d → 12d | 0d → 50d |  |  |
| 25 | Creación de botones y listas de parámetros configurables | 2012-06-22 → 2012-06-14 (-8d) | 2012-07-02 → 2012-06-21 (-11d) |  | 0d → 50d |  |  |
| 26 | Creación de modelos de ejemplo | 2012-07-03 → 2012-06-21 (-12d) | 2012-07-03 → 2012-06-22 (-11d) | 1d → 2d | 0d → 50d |  |  |
| 27 | Carga de modelos | 2012-07-04 → 2012-06-22 (-12d) | 2012-07-04 → 2012-06-23 (-11d) |  | 0d → 50d |  |  |
| 28 | Testeo | 2012-07-05 → 2012-06-23 (-12d) | 2012-07-09 → 2012-06-26 (-13d) |  | 0d → 50d |  |  |
| 29 | **Iteración 2** | 2012-07-09 → 2012-06-26 (-13d) | 2012-08-03 → 2012-07-22 (-12d) | 27.38d → 29d | 0d → 50d |  |  |
| 30 | **Desarrollo del motor de FEM (Parte 2)** | 2012-07-09 → 2012-06-26 (-13d) | 2012-07-23 → 2012-07-09 (-14d) |  | 9d → 60d |  |  |
| 31 | Lectura y procesamiento de los modelos preprocesados desde la interfaz previamente definida | 2012-07-09 → 2012-06-26 (-13d) | 2012-07-23 → 2012-07-09 (-14d) |  | 9d → 60d |  |  |
| 32 | **Desarrollo de interfaz gráfica de preprocesamineto (Parte 2)** | 2012-07-09 → 2012-06-26 (-13d) | 2012-07-31 → 2012-07-18 (-13d) | 24d → 25d | 0d → 50d |  |  |
| 33 | Mejorar la visualizacion 3D | 2012-07-09 → 2012-06-26 (-13d) | 2012-07-16 → 2012-07-03 (-13d) |  | 0d → 50d |  |  |
| 34 | Expansión de parámetros configurables | 2012-07-17 → 2012-07-03 (-14d) | 2012-07-24 → 2012-07-10 (-14d) |  | 0d → 50d |  |  |
| 35 | Almacenamiento de modelos preprocesados | 2012-07-24 → 2012-07-10 (-14d) | 2012-07-31 → 2012-07-18 (-13d) | 8d → 9d | 0d → 50d |  |  |
| 36 | Testeo | 2012-07-31 → 2012-07-18 (-13d) | 2012-08-03 → 2012-07-22 (-12d) | 3d → 4d | 0d → 50d |  |  |
| 37 | **Iteración 3** | 2012-08-03 → 2012-07-22 (-12d) | 2012-09-18 → 2012-08-19 (-30d) | 51.75d → 32d | 0d → 50d |  |  |
| 38 | Definicion de la interfaz de datos entre el motor y el postprocesamiento | 2012-08-03 → 2012-07-22 (-12d) | 2012-08-07 → 2012-07-24 (-14d) | 2d → 3d | 29d → 69d |  |  |
| 39 | Diseño de la interfaz gráfica de usuario para el postprocesamiento | 2012-08-07 → 2012-07-24 (-14d) | 2012-08-08 → 2012-08-02 (-6d) | 1d → 10d | 29d → 69d |  |  |
| 40 | **Desarrollo del motor de FEM (Parte 3)** | 2012-08-03 → 2012-07-22 (-12d) | 2012-08-10 → 2012-07-26 (-15d) |  | 24d → 74d |  |  |
| 41 | Almacenamiento del resultado del procesamiento bajo la interfaz definida | 2012-08-03 → 2012-07-22 (-12d) | 2012-08-10 → 2012-07-26 (-15d) |  | 24d → 74d |  |  |
| 42 | **Desarrollo de interfaz grafica de postprocesamiento (Parte 1)** | 2012-08-03 → 2012-07-22 (-12d) | 2012-09-13 → 2012-08-16 (-28d) |  | 0d → 50d |  |  |
| 43 | Creación de escenario 3D para carga de los resultados | 2012-08-03 → 2012-07-22 (-12d) | 2012-08-13 → 2012-07-27 (-17d) |  | 0d → 50d |  |  |
| 44 | Creación de la lista de los frames a visualizar | 2012-08-13 → 2012-07-27 (-17d) | 2012-08-15 → 2012-07-29 (-17d) |  | 0d → 50d |  |  |
| 45 | Cargar resultados de procesamiento | 2012-08-15 → 2012-07-29 (-17d) | 2012-09-04 → 2012-08-10 (-25d) |  | 0d → 50d |  |  |
| 46 | Visualizar los resultados frame por frame. | 2012-09-04 → 2012-08-10 (-25d) | 2012-09-13 → 2012-08-16 (-28d) |  | 0d → 50d |  |  |
| 47 | Testeo | 2012-09-13 → 2012-08-17 (-27d) | 2012-09-18 → 2012-08-19 (-30d) |  | 0d → 50d |  |  |
| 48 | **Iteración 4** | 2012-09-18 → 2012-08-19 (-30d) | 2012-10-11 → 2012-09-03 (-38d) | 25.88d → 17d | 0d → 50d |  |  |
| 49 | **Desarrollo de interfaz gráfica de preprocesamiento (Parte 3)** | 2012-09-18 → 2012-08-19 (-30d) | 2012-10-01 → 2012-08-27 (-35d) |  | 3.75d → 51d |  |  |
| 50 | Agregar parametros adicionales | 2012-09-18 → 2012-08-19 (-30d) | 2012-10-01 → 2012-08-27 (-35d) |  | 3.75d → 51d |  |  |
| 51 | **Desarrollo de interfaz grafica de postprocesamiento (Parte 2)** | 2012-09-18 → 2012-08-19 (-30d) | 2012-10-08 → 2012-09-01 (-37d) |  | 0d → 50d |  |  |
| 52 | Visualizacion de los resultados en base a diferentes criterios (Presion, tension y desplazamiento) | 2012-09-18 → 2012-08-19 (-30d) | 2012-09-27 → 2012-08-25 (-33d) |  | 0d → 50d |  |  |
| 53 | Opcion para ver los resultados de forma continua y fluida | 2012-09-27 → 2012-08-25 (-33d) | 2012-10-08 → 2012-09-01 (-37d) |  | 0d → 50d |  |  |
| 54 | **Desarrollo del motor FEM (Parte 4)** | 2012-10-01 → 2012-08-27 (-35d) | 2012-10-07 → 2012-09-02 (-35d) | 4.62d → 7d | 3.38d → 51d |  |  |
| 55 | Agregar los parametros adicionales al calculo del procesamiento | 2012-10-01 → 2012-08-27 (-35d) | 2012-10-07 → 2012-09-02 (-35d) |  | 4.25d → 51d |  |  |
| 56 | Testeo | 2012-10-08 → 2012-09-01 (-37d) | 2012-10-11 → 2012-09-03 (-38d) |  | 0d → 50d |  |  |
| 57 | **Iteracion 5** | 2012-10-11 → 2012-09-03 (-38d) | 2012-10-29 → 2012-09-09 (-50d) | 20.25d → 7d | 0d → 50d |  |  |
| 58 | Integracion | 2012-10-11 → 2012-09-03 (-38d) | 2012-10-18 → 2012-09-06 (-42d) | 5d → 3d | 0d → 54d |  |  |
| 59 | Creacion de modelos mas elaborados | 2012-10-11 → 2012-09-03 (-38d) | 2012-10-16 → 2012-09-06 (-40d) |  | 2d → 54d |  |  |
| 69 | Preparación de la presentación comercial | 2012-10-30 → 2012-09-13 (-47d) | 2012-10-31 → 2012-09-17 (-44d) | 2d → 4d | 0d → 50d | Cierre → none |  |

## Version 3 (saved 2012-06-06)

Note of the change: Modificacion project

Last finish stays 2012-10-31.

Added:

| ID | Task | Duration | Start | Finish | Constraint |
| --- | --- | --- | --- | --- | --- |
| 29 | Creación de poster | 4d | 2012-06-15 | 2012-06-18 | start no earlier than 2012-06-15 |

Changed:

| ID | Task | Start | Finish | Duration | Total float |
| --- | --- | --- | --- | --- | --- |
| 16 | **Fase de Ejecución** |  | 2012-09-13 → 2012-09-29 (+16d) | 120d → 138d | 50d → 31d |
| 38 | **Iteración 3** |  | 2012-08-19 → 2012-08-30 (+11d) | 32d → 44d | 50d → 33d |
| 39 | Definicion de la interfaz de datos entre el motor y el postprocesamiento |  | 2012-07-24 → 2012-07-25 (+1d) | 3d → 4d | 69d → 53d |
| 40 | Diseño de la interfaz gráfica de usuario para el postprocesamiento | 2012-07-24 → 2012-07-25 (+1d) | 2012-08-02 → 2012-08-12 (+10d) | 10d → 20d | 69d → 53d |
| 41 | **Desarrollo del motor de FEM (Parte 3)** |  | 2012-07-26 → 2012-07-27 (+1d) | 5d → 6d | 74d → 67d |
| 42 | Almacenamiento del resultado del procesamiento bajo la interfaz definida |  | 2012-07-26 → 2012-07-27 (+1d) | 5d → 6d | 74d → 67d |
| 43 | **Desarrollo de interfaz grafica de postprocesamiento (Parte 1)** |  | 2012-08-16 → 2012-08-26 (+10d) | 29d → 40d | 50d → 33d |
| 44 | Creación de escenario 3D para carga de los resultados |  | 2012-07-27 → 2012-08-04 (+8d) | 6d → 15d | 50d → 33d |
| 45 | Creación de la lista de los frames a visualizar | 2012-07-27 → 2012-08-04 (+8d) | 2012-07-29 → 2012-08-08 (+10d) | 2d → 4d | 50d → 33d |
| 46 | Cargar resultados de procesamiento | 2012-07-29 → 2012-08-08 (+10d) | 2012-08-10 → 2012-08-20 (+10d) |  | 50d → 33d |
| 47 | Visualizar los resultados frame por frame. | 2012-08-10 → 2012-08-20 (+10d) | 2012-08-16 → 2012-08-26 (+10d) |  | 50d → 33d |
| 48 | Testeo | 2012-08-17 → 2012-08-26 (+9d) | 2012-08-19 → 2012-08-30 (+11d) | 3d → 4d | 50d → 33d |
| 49 | **Iteración 4** | 2012-08-19 → 2012-08-30 (+11d) | 2012-09-03 → 2012-09-18 (+15d) | 17d → 22d | 50d → 31d |
| 50 | **Desarrollo de interfaz gráfica de preprocesamiento (Parte 3)** | 2012-08-19 → 2012-08-30 (+11d) | 2012-08-27 → 2012-09-12 (+16d) | 9d → 15d | 51d → 31d |
| 51 | Agregar parametros adicionales | 2012-08-19 → 2012-08-30 (+11d) | 2012-08-27 → 2012-09-12 (+16d) | 9d → 15d | 51d → 31d |
| 52 | **Desarrollo de interfaz grafica de postprocesamiento (Parte 2)** | 2012-08-19 → 2012-08-30 (+11d) | 2012-09-01 → 2012-09-11 (+10d) |  | 50d → 36d |
| 53 | Visualizacion de los resultados en base a diferentes criterios (Presion, tension y desplazamiento) | 2012-08-19 → 2012-08-30 (+11d) | 2012-08-25 → 2012-09-05 (+11d) |  | 50d → 36d |
| 54 | Opcion para ver los resultados de forma continua y fluida | 2012-08-25 → 2012-09-05 (+11d) | 2012-09-01 → 2012-09-11 (+10d) |  | 50d → 36d |
| 55 | **Desarrollo del motor FEM (Parte 4)** | 2012-08-27 → 2012-09-12 (+16d) | 2012-09-02 → 2012-09-18 (+16d) |  | 51d → 31d |
| 56 | Agregar los parametros adicionales al calculo del procesamiento | 2012-08-27 → 2012-09-12 (+16d) | 2012-09-02 → 2012-09-18 (+16d) |  | 51d → 31d |
| 57 | Testeo | 2012-09-01 → 2012-09-12 (+11d) | 2012-09-03 → 2012-09-15 (+12d) |  | 50d → 35d |
| 58 | **Iteracion 5** | 2012-09-03 → 2012-09-18 (+15d) | 2012-09-09 → 2012-09-25 (+16d) |  | 50d → 31d |
| 59 | Integracion | 2012-09-03 → 2012-09-18 (+15d) | 2012-09-06 → 2012-09-21 (+15d) |  | 54d → 35d |
| 60 | Creacion de modelos mas elaborados | 2012-09-03 → 2012-09-18 (+15d) | 2012-09-06 → 2012-09-21 (+15d) |  | 54d → 35d |
| 61 | Testing General y Final | 2012-09-03 → 2012-09-18 (+15d) | 2012-09-09 → 2012-09-25 (+16d) |  | 50d → 31d |
| 62 | **Iteración 6** | 2012-09-10 → 2012-09-25 (+15d) | 2012-09-13 → 2012-09-29 (+16d) | 4d → 5d | 50d → 31d |
| 63 | Manual de Usuario | 2012-09-10 → 2012-09-25 (+15d) | 2012-09-11 → 2012-09-27 (+16d) | 2d → 3d | 50d → 31d |
| 64 | Manual de Instalación y Configuración | 2012-09-11 → 2012-09-27 (+16d) | 2012-09-12 → 2012-09-29 (+17d) | 1d → 2d | 51d → 31d |
| 65 | Creación del instalador | 2012-09-11 → 2012-09-27 (+16d) | 2012-09-13 → 2012-09-29 (+16d) |  | 50d → 31d |
| 66 | **Fase de Cierre** | 2012-09-13 → 2012-09-29 (+16d) | 2012-09-17 → 2012-10-03 (+16d) | 4d → 5d | 50d → 31d |
| 67 | **Cierre del Proyecto** | 2012-09-13 → 2012-09-29 (+16d) | 2012-09-17 → 2012-10-03 (+16d) | 4d → 5d | 50d → 31d |
| 68 | Documentos de Lecciones Aprendidas | 2012-09-13 → 2012-09-29 (+16d) | 2012-09-14 → 2012-10-02 (+18d) | 1d → 3d | 53d → 33d |
| 69 | Documentos de Cierre | 2012-09-13 → 2012-09-29 (+16d) | 2012-09-15 → 2012-10-02 (+17d) | 2d → 3d | 52d → 33d |
| 70 | Preparación de la presentación comercial | 2012-09-13 → 2012-09-29 (+16d) | 2012-09-17 → 2012-10-03 (+16d) | 4d → 5d | 50d → 31d |
